# Delivery Schedule

Schedule from MS Project, 2014-10-06 to 2015-01-16.

## Calendars

- Standard: Mon-Fri 08:00-12:00, 13:00-17:00; Sat-Sun off.

## Resources

| Resource |
| --- |
| Resource #1 |
| Resource #2 |
| Resource #3 |
| Resource #4 |

## Schedule

| ID | WBS | Task | Duration | Start | Finish | Predecessors | Total slack | Free slack | Resources | Work |
| --- | --- | --- | --- | --- | --- | --- | --- | --- | --- | --- |
| 1 | 1 | **Huawei Pits** | 75d | 2014-10-06 | 2015-01-16 |  | 0d |  |  | 2064h |
| 2 | 1.1 | **H.248 Binary** | 23d | 2014-10-06 | 2014-11-05 |  | 7d | 0d | Resource #1 | 184h |
| 3 | 1.1.1 | Verify environment | 1d | 2014-10-06 | 2014-10-06 |  | 7d | 0d |  |  |
| 4 | 1.1.2 | Build | 15d | 2014-10-07 | 2014-10-27 | 3 | 7d | 0d |  |  |
| 5 | 1.1.3 | Test | 5d | 2014-10-28 | 2014-11-03 | 4 | 7d | 0d |  |  |
| 6 | 1.1.4 | Accept | 2d | 2014-11-04 | 2014-11-05 | 5 | 7d |  |  |  |
| 7 | 1.2 | **H.248 Text** | 22d | 2014-11-06 | 2014-12-05 | 2 | 7d | 0d | Resource #1 | 176h |
| 8 | 1.2.1 | Verify environment | 1d | 2014-11-06 | 2014-11-06 |  | 7d | 0d |  |  |
| 9 | 1.2.2 | Build | 15d | 2014-11-07 | 2014-11-27 | 8 | 7d | 0d |  |  |
| 10 | 1.2.3 | Test | 5d | 2014-11-28 | 2014-12-04 | 9 | 7d | 0d |  |  |
| 11 | 1.2.4 | Accept | 1d | 2014-12-05 | 2014-12-05 | 10 | 7d |  |  |  |
| 12 | 1.3 | **M3UA** | 23d | 2014-12-08 | 2015-01-07 | 7 | 7d |  | Resource #1 | 184h |
| 13 | 1.3.1 | Verify environment | 1d | 2014-12-08 | 2014-12-08 |  | 7d | 0d |  |  |
| 14 | 1.3.2 | Build | 15d | 2014-12-09 | 2014-12-29 | 13 | 7d | 0d |  |  |
| 15 | 1.3.3 | Test | 5d | 2014-12-30 | 2015-01-05 | 14 | 7d | 0d |  |  |
| 16 | 1.3.4 | Accept | 2d | 2015-01-06 | 2015-01-07 | 15 | 7d |  |  |  |
| 17 | 1.4 | **ERPS** | 18d | 2014-10-06 | 2014-10-29 |  | 3d | 0d | Resource #2 | 144h |
| 18 | 1.4.1 | Verify environment | 1d | 2014-10-06 | 2014-10-06 |  | 3d | 0d |  |  |
| 19 | 1.4.2 | Build | 10d | 2014-10-07 | 2014-10-20 | 18 | 3d | 0d |  |  |
| 20 | 1.4.3 | Test | 5d | 2014-10-21 | 2014-10-27 | 19 | 3d | 0d |  |  |
| 21 | 1.4.4 | Accept | 2d | 2014-10-28 | 2014-10-29 | 20 | 3d |  |  |  |
| 22 | 1.5 | **M2PA** | 18d | 2014-10-30 | 2014-11-24 | 17 | 3d | 0d | Resource #2 | 144h |
| 23 | 1.5.1 | Verify environment | 1d | 2014-10-30 | 2014-10-30 |  | 3d | 0d |  |  |
| 24 | 1.5.2 | Build | 10d | 2014-10-31 | 2014-11-13 | 23 | 3d | 0d |  |  |
| 25 | 1.5.3 | Test | 5d | 2014-11-14 | 2014-11-20 | 24 | 3d | 0d |  |  |
| 26 | 1.5.4 | Accept | 2d | 2014-11-21 | 2014-11-24 | 25 | 3d |  |  |  |

| ID | WBS | Task | Duration | Start | Finish | Predecessors | Total slack | Free slack | Resources | Work |
| --- | --- | --- | --- | --- | --- | --- | --- | --- | --- | --- |
| 27 | 1.6 | **MGCP** | 18d | 2014-11-25 | 2014-12-18 | 22 | 3d | 0d | Resource #2 | 144h |
| 28 | 1.6.1 | Verify environment | 1d | 2014-11-25 | 2014-11-25 |  | 3d | 0d |  |  |
| 29 | 1.6.2 | Build | 10d | 2014-11-26 | 2014-12-09 | 28 | 3d | 0d |  |  |
| 30 | 1.6.3 | Test | 5d | 2014-12-10 | 2014-12-16 | 29 | 3d | 0d |  |  |
| 31 | 1.6.4 | Accept | 2d | 2014-12-17 | 2014-12-18 | 30 | 3d |  |  |  |
| 32 | 1.7 | **MLDP** | 18d | 2014-12-19 | 2015-01-13 | 27 | 3d |  | Resource #2 | 144h |
| 33 | 1.7.1 | Verify environment | 1d | 2014-12-19 | 2014-12-19 |  | 3d | 0d |  |  |
| 34 | 1.7.2 | Build | 10d | 2014-12-22 | 2015-01-02 | 33 | 3d | 0d |  |  |
| 35 | 1.7.3 | Test | 5d | 2015-01-05 | 2015-01-09 | 34 | 3d | 0d |  |  |
| 36 | 1.7.4 | Accept | 2d | 2015-01-12 | 2015-01-13 | 35 | 3d |  |  |  |
| 37 | 1.8 | **RTP/RTCP/SRTP** | 60d | 2014-10-27 | 2015-01-16 |  |  |  | Resource #3 | 480h |
| 38 | 1.8.1 | Verify environment | 2d | 2014-10-27 | 2014-10-28 |  | 0d |  |  |  |
| 39 | 1.8.2 | Build | 45d | 2014-10-29 | 2014-12-30 | 38 | 0d |  |  |  |
| 40 | 1.8.3 | Test | 10d | 2014-12-31 | 2015-01-13 | 39 | 0d |  |  |  |
| 41 | 1.8.4 | Accept | 3d | 2015-01-14 | 2015-01-16 | 40 | 0d |  |  |  |
| 42 | 1.9 | **SIP-I/SIP-T** | 29d | 2014-10-27 | 2014-12-04 |  |  |  | Resource #4 | 232h |
| 43 | 1.9.1 | Verify environment | 2d | 2014-10-27 | 2014-10-28 |  | 0d |  |  |  |
| 44 | 1.9.2 | Build | 20d | 2014-10-29 | 2014-11-25 | 43 | 0d |  |  |  |
| 45 | 1.9.3 | Test | 5d | 2014-11-26 | 2014-12-02 | 44 | 0d |  |  |  |
| 46 | 1.9.4 | Accept | 2d | 2014-12-03 | 2014-12-04 | 45 | 0d |  |  |  |
| 47 | 1.10 | **SFTP** | 29d | 2014-12-05 | 2015-01-14 | 42 | 2d |  | Resource #4 | 232h |
| 48 | 1.10.1 | Verify environment | 2d | 2014-12-05 | 2014-12-08 |  | 2d | 0d |  |  |
| 49 | 1.10.2 | Build | 20d | 2014-12-09 | 2015-01-05 | 48 | 2d | 0d |  |  |
| 50 | 1.10.3 | Test | 5d | 2015-01-06 | 2015-01-12 | 49 | 2d | 0d |  |  |
| 51 | 1.10.4 | Accept | 2d | 2015-01-13 | 2015-01-14 | 50 | 2d |  |  |  |
